# PF-01_cronograma

Schedule from MS Project, 2026-10-10 to 2026-11-26, A marks actual dates.

## Calendars

- Estándar: Mon-Fri 09:00-13:00, 14:00-18:00; Sat-Sun off. Exceptions (off unless hours are given): 2026-10-10 to 2026-10-11 09:00-13:00, 14:00-18:00 (Planificación PF-01 en fin de semana).

## Schedule

| ID | WBS | Task | Type | Duration | Start | Finish | Predecessors | Complete | Remaining | Baseline start | Baseline finish | Baseline duration | Baseline 1 start | Baseline 1 finish | Total slack | Free slack | Constraint | Issue | Fase |
| --- | --- | --- | --- | --- | --- | --- | --- | --- | --- | --- | --- | --- | --- | --- | --- | --- | --- | --- | --- |
| 1 | 1 | **1 Gestión** |  | 14d | 2026-10-10 A | 2026-10-27 |  | 80% | 2.8d | 2026-10-12 | 2026-11-23 | 31d | 2026-10-10 | 2026-10-29 | 19d |  |  |  |  |
| 2 | 1.1 | 1.1 Acta y alcance |  | 2d | 2026-10-10 A | 2026-10-11 A |  | 100% |  | 2026-10-12 | 2026-10-13 | 2d | 2026-10-10 | 2026-10-11 |  |  |  | #2 | 1 Planificación |
| 3 | 1.2 | **1.2 Plan y línea base en Project** |  | 1d | 2026-10-11 A | 2026-10-11 A |  | 100% |  | 2026-10-14 | 2026-10-16 | 3d | 2026-10-11 | 2026-10-11 |  |  |  | #3 | 1 Planificación |
| 4 | 1.2.1 | EDT, Gantt y plan GitHub |  | 1d | 2026-10-11 A | 2026-10-11 A | 2 | 100% |  | 2026-10-14 | 2026-10-14 | 1d | 2026-10-11 | 2026-10-11 |  |  |  | #3 | 1 Planificación |
| 5 | 1.2.2 | Plan aprobado | milestone | 0d | 2026-10-11 A | 2026-10-11 A | 4 | 100% |  | 2026-10-14 | 2026-10-14 | 0d | 2026-10-11 | 2026-10-11 |  |  |  | #3 | 1 Planificación |
| 6 | 1.2.3 | Línea base, repositorio y plan GitHub |  | 1d | 2026-10-11 A | 2026-10-11 A | 5 | 100% |  | 2026-10-15 | 2026-10-16 | 2d | 2026-10-11 | 2026-10-11 |  |  |  | #3 | 1 Planificación |
| 7 | 1.3 | 1.3 Cierre y desvíos |  | 1d | 2026-10-27 | 2026-10-27 | 22 |  |  | 2026-11-23 | 2026-11-23 | 1d | 2026-10-29 | 2026-10-29 | 19d | 0d |  | #13 | 3 Cierre |
| 8 | 1.4 | Listo para cierre | milestone | 0d | 2026-10-27 | 2026-10-27 | 7 |  |  | 2026-11-23 | 2026-11-23 | 0d | 2026-10-29 | 2026-10-29 | 19d | 0d |  | #13 | 3 Cierre |
| 9 | 2 | **2 Datos** |  | 4d | 2026-10-11 A | 2026-10-14 |  | 40% | 2.4d | 2026-11-02 | 2026-11-09 | 6d | 2026-10-11 | 2026-10-16 | 26d |  |  |  |  |
| 10 | 2.1 | 2.1 Extracción |  | 1d | 2026-10-11 A | 2026-10-11 A | 6 | 100% |  | 2026-11-02 | 2026-11-03 | 2d | 2026-10-11 | 2026-10-11 |  |  | start no earlier than 2026-11-02 | #4 | 2 Ejecución |
| 11 | 2.2 | 2.2 Validación |  | 1d | 2026-10-11 A | 2026-10-11 A | 10 | 100% |  | 2026-11-04 | 2026-11-05 | 2d | 2026-10-12 | 2026-10-13 |  |  |  | #5 | 2 Ejecución |
| 12 | 2.3 | 2.3 Modelo de datos Oracle |  | 2d | 2026-10-12 | 2026-10-13 | 11 |  |  | 2026-11-06 | 2026-11-09 | 2d | 2026-10-14 | 2026-10-15 | 19d | 0d |  | #6 | 2 Ejecución |
| 13 | 2.4 | 2.4 Arquitectura y modelo de datos en Visio |  | 1d | 2026-10-14 | 2026-10-14 | 12 |  |  |  |  |  | 2026-10-16 | 2026-10-16 | 26d | 7d |  | #24 | 2 Ejecución |
| 14 | 3 | **3 Análisis** |  | 5d | 2026-10-14 | 2026-10-20 |  |  |  | 2026-11-10 | 2026-11-13 | 4d | 2026-10-16 | 2026-10-22 | 19d |  |  |  |  |
| 15 | 3.1 | 3.1 Exploración |  | 1d | 2026-10-14 | 2026-10-14 | 12 |  |  | 2026-11-10 | 2026-11-10 | 1d | 2026-10-16 | 2026-10-16 | 19d | 0d |  | #7 | 2 Ejecución |
| 16 | 3.2 | 3.2 Indicadores y matriz |  | 2d | 2026-10-15 | 2026-10-16 | 15 |  |  | 2026-11-11 | 2026-11-12 | 2d | 2026-10-19 | 2026-10-20 | 19d | 0d |  | #8 | 2 Ejecución |
| 17 | 3.3 | 3.3 Validación de resultados |  | 1d | 2026-10-19 | 2026-10-19 | 16 |  |  | 2026-11-13 | 2026-11-13 | 1d | 2026-10-21 | 2026-10-21 | 19d | 0d |  | #9 | 2 Ejecución |
| 18 | 3.4 | 3.4 Proceso AS-IS y TO-BE en Bizagi |  | 1d | 2026-10-20 | 2026-10-20 | 17 |  |  |  |  |  | 2026-10-22 | 2026-10-22 | 22d | 3d |  | #25 | 2 Ejecución |
| 19 | 4 | **4 Producto** |  | 5d | 2026-10-20 | 2026-10-26 |  |  |  | 2026-11-16 | 2026-11-20 | 5d | 2026-10-22 | 2026-10-28 | 19d |  |  |  |  |
| 20 | 4.1 | 4.1 Tablero Power BI |  | 3d | 2026-10-20 | 2026-10-22 | 17 |  |  | 2026-11-16 | 2026-11-18 | 3d | 2026-10-22 | 2026-10-26 | 19d | 0d |  | #10 | 2 Ejecución |
| 21 | 4.2 | 4.2 Informe |  | 1d | 2026-10-23 | 2026-10-23 | 20 |  |  | 2026-11-19 | 2026-11-19 | 1d | 2026-10-27 | 2026-10-27 | 19d | 0d |  | #11 | 2 Ejecución |
| 22 | 4.3 | 4.3 README |  | 1d | 2026-10-26 | 2026-10-26 | 21, 13, 18 |  |  | 2026-11-20 | 2026-11-20 | 1d | 2026-10-28 | 2026-10-28 | 19d | 0d |  | #12 | 2 Ejecución |
| 23 | 5 | **5 Comunicación** |  | 22d | 2026-10-28 | 2026-11-26 |  |  |  | 2026-11-24 | 2026-11-26 | 3d | 2026-10-30 | 2026-11-26 | 0d |  |  |  |  |
| 24 | 5.1 | 5.1 Post |  | 2d | 2026-10-28 | 2026-10-29 | 8 |  |  | 2026-11-24 | 2026-11-25 | 2d | 2026-10-30 | 2026-11-02 | 19d |  |  | #14 | 3 Cierre |
| 25 | 5.2 | 5.2 Documento PDF |  | 2d | 2026-10-28 | 2026-10-29 | 8 |  |  | 2026-11-24 | 2026-11-25 | 2d | 2026-10-30 | 2026-11-02 | 19d |  |  | #15 | 3 Cierre |
| 26 | 5.3 | Publicación en LinkedIn | milestone | 0d | 2026-11-26 | 2026-11-26 | 24, 25 |  |  | 2026-11-26 | 2026-11-26 | 0d | 2026-11-26 | 2026-11-26 | 0d |  | start no earlier than 2026-11-26 | #16 | 3 Cierre |
| 27 | 5.4 | 5.3 Destacados y registro |  | 1d | 2026-11-26 | 2026-11-26 | 26 |  |  | 2026-11-26 | 2026-11-26 | 1d | 2026-11-26 | 2026-11-26 | 0d |  |  | #16 | 3 Cierre |
